Schedule from MS Project, 2022-09-20 to 2022-12-13, costs in €, A marks actual dates.
Microsoft

## Calendars

- Calendario Sevilla: Mon-Sun 11:00-13:00, 16:00-18:00. Exceptions (off unless hours are given): 2022-11-01 (Festividad de Todos los Santos), 2022-12-06 (Día de la Constitución), 2022-12-08 (Festividad de la Inmaculada Concepción).

## Resources

| Resource | Rate |
| --- | --- |
| Francisco Botello Romero | 10 |
| Irene Xiang Domínguez Garoz | 10 |
| Enrique Prada Vázquez | 10 |
| Marta Sampedro Bernal | 10 |
| Carlos Manuel Vinagre Lorenzo | 10 |
| Equipo Director | 13.75 |

## Schedule

| ID | WBS | Task | Type | Duration | Start | Finish | Predecessors | Complete | Actual finish | Baseline start | Baseline finish | Baseline duration | Baseline 1 start | Baseline 1 finish | Constraint | Resources | Work | Actual work | Cost | Baseline cost | Actual cost |
| --- | --- | --- | --- | --- | --- | --- | --- | --- | --- | --- | --- | --- | --- | --- | --- | --- | --- | --- | --- | --- | --- |
| 1 | 1 | **Planificación** |  | 19.75d? | 2022-09-20 A | 2022-10-28 |  | 100% | 2022-10-24 | 2022-09-20 | 2022-10-28 | 19.75d? | 2022-09-20 | 2022-10-28 |  |  | 123.2h | 123.2h | 1,694 | 1,694 | 1,694 |
| 2 | 1.1 | **Gestión de la Integración** |  | 1d? | 2022-09-20 A | 2022-09-21 A |  | 100% |  | 2022-09-20 | 2022-09-21 | 1d? | 2022-09-20 | 2022-09-21 |  |  | 8h | 8h | 110 | 110 | 110 |
| 3 | 1.1.1 | Plan Para la Dirección del Proyecto |  | 1d? | 2022-09-20 A | 2022-09-21 A |  | 100% |  | 2022-09-20 | 2022-09-21 | 1d? | 2022-09-20 | 2022-09-21 |  | Equipo Director | 8h | 8h | 110 | 110 | 110 |
| 4 | 1.2 | **Gestión del Alcance** |  | 10d? | 2022-09-24 A | 2022-10-13 A |  | 100% |  | 2022-09-24 | 2022-10-13 | 10d? | 2022-09-24 | 2022-10-13 |  |  | 27.2h | 27.2h | 374 | 374 | 374 |
| 5 | 1.2.1 | Plan de Gestión del Alcance |  | 0.5d | 2022-09-25 A | 2022-09-25 A | 3, 30 | 100% |  | 2022-09-25 | 2022-09-25 | 0.5d | 2022-09-25 | 2022-09-25 | start no earlier than 2022-09-25 | Equipo Director [50%] | 2h | 2h | 27.5 | 27.5 | 27.5 |
| 6 | 1.2.2 | Plan de Gestión de Requisitos |  | 0.5d | 2022-09-24 A | 2022-09-24 A | 3, 30 | 100% |  | 2022-09-24 | 2022-09-24 | 0.5d | 2022-09-24 | 2022-09-24 | start no earlier than 2022-09-24 | Equipo Director [50%] | 2h | 2h | 27.5 | 27.5 | 27.5 |
| 7 | 1.2.3 | Catálogo de Requisitos |  | 1d? | 2022-09-26 A | 2022-09-27 A | 5, 3, 6 | 100% |  | 2022-09-26 | 2022-09-27 | 1d? | 2022-09-26 | 2022-09-27 |  | Equipo Director [40%] | 3.2h | 3.2h | 44 | 44 | 44 |
| 8 | 1.2.4 | Matriz de Trazabilidad |  | 1d | 2022-09-26 A | 2022-09-27 A | 5, 3, 6 | 100% |  | 2022-09-26 | 2022-09-27 | 1d | 2022-09-26 | 2022-09-27 |  | Equipo Director [40%] | 3.2h | 3.2h | 44 | 44 | 44 |
| 9 | 1.2.5 | Enunciado del Alcance |  | 1d? | 2022-10-04 A | 2022-10-05 A | 3, 5, 7, 40 | 100% |  | 2022-10-04 | 2022-10-05 | 1d? | 2022-10-04 | 2022-10-05 | start no earlier than 2022-10-04 | Equipo Director [50%] | 4h | 4h | 55 | 55 | 55 |
| 10 | 1.2.6 | EDT |  | 1d? | 2022-10-06 A | 2022-10-07 A | 3, 5, 7, 9 | 100% |  | 2022-10-06 | 2022-10-07 | 1d? | 2022-10-06 | 2022-10-07 | start no earlier than 2022-10-05 | Equipo Director | 8h | 8h | 110 | 110 | 110 |
| 11 | 1.2.7 | Diccionario EDT |  | 3d | 2022-10-08 A | 2022-10-13 A | 3, 5, 7, 10 | 100% |  | 2022-10-08 | 2022-10-13 | 3d | 2022-10-08 | 2022-10-13 | start no earlier than 2022-10-08 | Equipo Director [20%] | 4.8h | 4.8h | 66 | 66 | 66 |
| 12 | 1.2.8 | Fin de paquete | milestone | 0d | 2022-10-13 A | 2022-10-13 A | 11 | 100% |  | 2022-10-13 | 2022-10-13 | 0d | 2022-10-13 | 2022-10-13 |  |  |  |  |  |  |  |
| 13 | 1.3 | **Gestión del Cronograma** |  | 12d? | 2022-09-26 A | 2022-10-19 A |  | 100% |  | 2022-09-26 | 2022-10-19 | 12d? | 2022-09-26 | 2022-10-19 |  |  | 30.8h | 30.8h | 423.5 | 423.5 | 423.5 |
| 14 | 1.3.1 | Plan de Gestión del Cronograma |  | 1d | 2022-09-26 A | 2022-09-27 A | 3, 5 | 100% |  | 2022-09-26 | 2022-09-27 | 1d | 2022-09-26 | 2022-09-27 |  | Equipo Director [20%] | 1.6h | 1.6h | 22 | 22 | 22 |
| 15 | 1.3.2 | Lista de Actividades |  | 1d? | 2022-10-01 A | 2022-10-02 A | 3, 5, 14 | 100% |  | 2022-10-01 | 2022-10-02 | 1d? | 2022-10-01 | 2022-10-02 | start no earlier than 2022-10-01 | Equipo Director [50%] | 4h | 4h | 55 | 55 | 55 |
| 16 | 1.3.3 | Atributos de Actividades |  | 0.5d | 2022-10-03 A | 2022-10-03 A | 3, 5, 14, 15 | 100% |  | 2022-10-03 | 2022-10-03 | 0.5d | 2022-10-03 | 2022-10-03 | start no earlier than 2022-10-01 | Equipo Director [50%] | 2h | 2h | 27.5 | 27.5 | 27.5 |
| 17 | 1.3.4 | Estimaciones Duraciones Actividades |  | 1d? | 2022-10-01 A | 2022-10-02 A | 3, 5, 14 | 100% |  | 2022-10-01 | 2022-10-02 | 1d? | 2022-10-01 | 2022-10-02 | start no earlier than 2022-10-01 | Equipo Director [50%] | 4h | 4h | 55 | 55 | 55 |
| 18 | 1.3.5 | Lista de Hitos |  | 1d? | 2022-10-08 A | 2022-10-09 A | 15, 16, 9, 14, 17 | 100% |  | 2022-10-08 | 2022-10-09 | 1d? | 2022-10-08 | 2022-10-09 | start no earlier than 2022-10-08 | Equipo Director [20%] | 1.6h | 1.6h | 22 | 22 | 22 |
| 19 | 1.3.6 | Diagrama de Red |  | 1d? | 2022-10-10 A | 2022-10-11 A | 3, 5, 14, 15, 16, 17, 32, 33, 35, 40 | 100% |  | 2022-10-10 | 2022-10-11 | 1d? | 2022-10-10 | 2022-10-11 | start no earlier than 2022-10-05 | Equipo Director [40%] | 3.2h | 3.2h | 44 | 44 | 44 |
| 20 | 1.3.7 | Cronograma |  | 3d | 2022-10-14 A | 2022-10-19 A | 3, 5, 6, 19 | 100% |  | 2022-10-14 | 2022-10-19 | 3d | 2022-10-14 | 2022-10-19 | start no earlier than 2022-10-14 | Equipo Director [60%] | 14.4h | 14.4h | 198 | 198 | 198 |
| 21 | 1.3.8 | Fin de paquete | milestone | 0d | 2022-10-19 A | 2022-10-19 A | 20 | 100% |  | 2022-10-19 | 2022-10-19 | 0d | 2022-10-19 | 2022-10-19 |  |  |  |  |  |  |  |
| 22 | 1.4 | **Gestión de los Costes** |  | 11.5d? | 2022-09-30 A | 2022-10-22 A |  | 100% |  | 2022-09-30 | 2022-10-22 | 11.5d? | 2022-09-30 | 2022-10-22 |  |  | 16h | 16h | 220 | 220 | 220 |
| 23 | 1.4.1 | Plan de Gestión de los Costes |  | 0.5d | 2022-09-30 A | 2022-09-30 A | 3, 14, 38 | 100% |  | 2022-09-30 | 2022-09-30 | 0.5d | 2022-09-30 | 2022-09-30 |  | Equipo Director | 4h | 4h | 55 | 55 | 55 |
| 24 | 1.4.2 | Estimaciones de los Costes |  | 0.5d | 2022-10-20 A | 2022-10-20 A | 3, 5, 23, 30, 20, 35, 40 | 100% |  | 2022-10-20 | 2022-10-20 | 0.5d | 2022-10-20 | 2022-10-20 | start no earlier than 2022-10-14 | Equipo Director [50%] | 2h | 2h | 27.5 | 27.5 | 27.5 |
| 25 | 1.4.3 | Base de las Estimaciones |  | 0.5d | 2022-10-20 A | 2022-10-20 A | 3, 5, 23, 20, 30, 35, 40 | 100% |  | 2022-10-20 | 2022-10-20 | 0.5d | 2022-10-20 | 2022-10-20 | start no earlier than 2022-10-18 | Equipo Director [50%] | 2h | 2h | 27.5 | 27.5 | 27.5 |
| 26 | 1.4.4 | Línea Base de Costes |  | 1d? | 2022-10-21 A | 2022-10-22 A | 3, 5, 23, 20, 40, 24 | 100% |  | 2022-10-21 | 2022-10-22 | 1d? | 2022-10-21 | 2022-10-22 | start no earlier than 2022-10-18 | Equipo Director [50%] | 4h | 4h | 55 | 55 | 55 |
| 27 | 1.4.5 | Presupuesto |  | 1d? | 2022-10-21 A | 2022-10-22 A | 3, 5, 20, 23, 40, 24 | 100% |  | 2022-10-21 | 2022-10-22 | 1d? | 2022-10-21 | 2022-10-22 | start no earlier than 2022-10-16 | Equipo Director [50%] | 4h | 4h | 55 | 55 | 55 |
| 28 | 1.4.6 | Fin de paquete | milestone | 0d | 2022-10-22 A | 2022-10-22 A | 27 | 100% |  | 2022-10-22 | 2022-10-22 | 0d | 2022-10-22 | 2022-10-22 |  |  |  |  |  |  |  |

| ID | WBS | Task | Type | Duration | Start | Finish | Predecessors | Complete | Remaining | Baseline start | Baseline finish | Baseline duration | Baseline 1 start | Baseline 1 finish | Total slack | Constraint | Resources | Work | Actual work | Cost | Baseline cost | Actual cost |
| --- | --- | --- | --- | --- | --- | --- | --- | --- | --- | --- | --- | --- | --- | --- | --- | --- | --- | --- | --- | --- | --- | --- |
| 29 | 1.5 | **Gestión de la Calidad** |  | 0.5d | 2022-09-23 A | 2022-09-23 A |  | 100% |  | 2022-09-23 | 2022-09-23 | 0.5d | 2022-09-23 | 2022-09-23 |  |  |  | 4h | 4h | 55 | 55 | 55 |
| 30 | 1.5.1 | Plan de Gestión de la Calidad |  | 0.5d | 2022-09-23 A | 2022-09-23 A | 3, 39 | 100% |  | 2022-09-23 | 2022-09-23 | 0.5d | 2022-09-23 | 2022-09-23 |  |  | Equipo Director | 4h | 4h | 55 | 55 | 55 |
| 31 | 1.6 | **Gestión de los Recursos** |  | 6d? | 2022-09-28 A | 2022-10-09 A |  | 100% |  | 2022-09-28 | 2022-10-09 | 6d? | 2022-09-28 | 2022-10-09 |  |  |  | 17.2h | 17.2h | 236.5 | 236.5 | 236.5 |
| 32 | 1.6.1 | Plan de Gestión de los Recursos |  | 1d? | 2022-10-03 A | 2022-10-04 A | 3, 5, 7, 40, 30 | 100% |  | 2022-10-03 | 2022-10-04 | 1d? | 2022-10-03 | 2022-10-04 |  | start no earlier than 2022-10-03 | Equipo Director [50%] | 4h | 4h | 55 | 55 | 55 |
| 33 | 1.6.2 | Matriz de Asignación de Responsabilidades |  | 1d? | 2022-10-08 A | 2022-10-09 A | 3, 5, 7, 40, 30 | 100% |  | 2022-10-08 | 2022-10-09 | 1d? | 2022-10-08 | 2022-10-09 |  | start no earlier than 2022-10-08 | Equipo Director [60%] | 4.8h | 4.8h | 66 | 66 | 66 |
| 34 | 1.6.3 | Acta de Constitución del Equipo de Proyecto |  | 1d? | 2022-09-28 A | 2022-09-29 A | 3, 5, 7 | 100% |  | 2022-09-28 | 2022-09-29 | 1d? | 2022-09-28 | 2022-09-29 |  | start no earlier than 2022-09-28 | Equipo Director [80%] | 6.4h | 6.4h | 88 | 88 | 88 |
| 35 | 1.6.4 | Estructura de Desglose de Recursos |  | 0.5d | 2022-10-05 A | 2022-10-05 A | 3, 5, 15, 16 | 100% |  | 2022-10-05 | 2022-10-05 | 0.5d | 2022-10-05 | 2022-10-05 |  | start no earlier than 2022-10-05 | Equipo Director [50%] | 2h | 2h | 27.5 | 27.5 | 27.5 |
| 36 | 1.7 | **Gestión de las Comunicaciones** |  | 0.5d | 2022-09-22 A | 2022-09-22 A |  | 100% |  | 2022-09-22 | 2022-09-22 | 0.5d | 2022-09-22 | 2022-09-22 |  |  |  | 2h | 2h | 27.5 | 27.5 | 27.5 |
| 37 | 1.7.1 | Plan de Gestión de las Comunicaciones |  | 0.5d | 2022-09-22 A | 2022-09-22 A | 3 | 100% |  | 2022-09-22 | 2022-09-22 | 0.5d | 2022-09-22 | 2022-09-22 |  |  | Equipo Director [50%] | 2h | 2h | 27.5 | 27.5 | 27.5 |
| 38 | 1.8 | **Gestión de los Riesgos** |  | 4d | 2022-09-22 A | 2022-09-29 A |  | 100% |  | 2022-09-22 | 2022-09-29 | 4d | 2022-09-22 | 2022-09-29 |  |  |  | 3.6h | 3.6h | 49.5 | 49.5 | 49.5 |
| 39 | 1.8.1 | Plan de Gestión de los Riesgos |  | 0.5d | 2022-09-22 A | 2022-09-22 A | 3 | 100% |  | 2022-09-22 | 2022-09-22 | 0.5d | 2022-09-22 | 2022-09-22 |  |  | Equipo Director [50%] | 2h | 2h | 27.5 | 27.5 | 27.5 |
| 40 | 1.8.2 | Registro de Riesgos |  | 1d | 2022-09-28 A | 2022-09-29 A | 3, 5, 6, 7, 14, 30 | 100% |  | 2022-09-28 | 2022-09-29 | 1d | 2022-09-28 | 2022-09-29 |  | start no earlier than 2022-09-28 | Equipo Director [20%] | 1.6h | 1.6h | 22 | 22 | 22 |
| 41 | 1.9 | **Gestión de las Adquisiciones** |  | 1d? | 2022-10-10 A | 2022-10-11 A |  | 100% |  | 2022-10-10 | 2022-10-11 | 1d? | 2022-10-10 | 2022-10-11 |  |  |  | 3.2h | 3.2h | 44 | 44 | 44 |
| 42 | 1.9.1 | Plan de Gestión de las Adquisiciones |  | 1d? | 2022-10-10 A | 2022-10-11 A | 3, 5, 7, 8, 17, 30, 32, 33, 40 | 100% |  | 2022-10-10 | 2022-10-11 | 1d? | 2022-10-10 | 2022-10-11 |  |  | Equipo Director [40%] | 3.2h | 3.2h | 44 | 44 | 44 |
| 43 | 1.10 | **Gestión del Cambio** |  | 1d? | 2022-10-12 A | 2022-10-13 A |  | 100% |  | 2022-10-12 | 2022-10-13 | 1d? | 2022-10-12 | 2022-10-13 |  |  |  | 3.2h | 3.2h | 44 | 44 | 44 |
| 44 | 1.10.1 | Plan de Gestión de Cambio |  | 1d? | 2022-10-12 A | 2022-10-13 A | 3, 5, 14, 23, 30, 32, 37, 39, 42 | 100% |  | 2022-10-12 | 2022-10-13 | 1d? | 2022-10-12 | 2022-10-13 |  | start no earlier than 2022-10-11 | Equipo Director [40%] | 3.2h | 3.2h | 44 | 44 | 44 |
| 45 | 1.11 | **Gestión de la Configuración** |  | 1d? | 2022-10-23 A | 2022-10-24 A |  | 100% |  | 2022-10-23 | 2022-10-24 | 1d? | 2022-10-23 | 2022-10-24 |  |  |  | 8h | 8h | 110 | 110 | 110 |
| 46 | 1.11.1 | Plan de Gestión de la Configuración |  | 1d? | 2022-10-23 A | 2022-10-24 A | 3, 5, 6, 7, 8, 12, 9, 10, 11, 14, 15, 16, 17, 18, 19, 20, 23, 24, 25, 26, 27, 30, 32, 33, 34, 35, 37, 39, 42, 44 | 100% |  | 2022-10-23 | 2022-10-24 | 1d? | 2022-10-23 | 2022-10-24 |  |  | Equipo Director | 8h | 8h | 110 | 110 | 110 |
| 47 | 1.12 | Fin cuenta de control | milestone | 0d | 2022-10-24 A | 2022-10-24 A | 46 | 100% |  | 2022-10-24 | 2022-10-24 | 0d | 2022-10-24 | 2022-10-24 |  |  |  |  |  |  |  |  |
| 48 | 2 | **Ejecucion** |  | 21.75d? | 2022-10-29 A | 2022-12-13 | 47 | 70% | 6.54d? | 2022-10-29 | 2022-12-13 | 21.75d? | 2022-10-29 | 2022-12-13 |  |  |  | 188.75h | 124.38h | 1,886.25 | 4,755.73 | 1,241.25 |
| 49 | 2.1 | **Formación** |  | 6.25d | 2022-10-29 A | 2022-11-11 A |  | 100% |  | 2022-10-29 | 2022-11-10 | 6d | 2022-10-29 | 2022-11-11 |  |  |  | 34h | 34h | 340 | 1,200 | 340 |
| 50 | 2.1.1 | Cursos de Django |  | 5.75d | 2022-10-29 A | 2022-11-11 A |  | 100% |  | 2022-10-29 | 2022-11-10 | 6d | 2022-10-29 | 2022-11-11 |  |  | Carlos Manuel Vinagre Lorenzo [50%]; Enrique Prada Vázquez [50%]; Francisco Botello Romero [50%]; Irene Xiang Domínguez Garoz [50%]; Marta Sampedro Bernal [50%] | 34h | 34h | 340 | 1,200 | 340 |
| 51 | 2.1.2 | Fin de Paquete | milestone | 0d | 2022-11-11 A | 2022-11-11 A | 50 | 100% |  | 2022-11-10 | 2022-11-10 | 0d | 2022-11-11 | 2022-11-11 |  |  |  |  |  |  |  |  |
| 52 | 2.2 | **Planificación** |  | 2.25d? | 2022-10-31 A | 2022-11-04 |  | 99% | 0d? | 2022-10-31 | 2022-11-04 | 2.25d? | 2022-10-31 | 2022-11-04 |  |  |  | 6.5h | 6.5h | 65 | 400 | 65 |
| 53 | 2.2.1 | Product Backlog |  | 0.7d | 2022-10-31 A | 2022-11-02 A |  | 100% |  | 2022-10-31 | 2022-11-04 | 2d | 2022-10-31 | 2022-11-02 |  | start no earlier than 2022-10-31 | Carlos Manuel Vinagre Lorenzo [25%]; Enrique Prada Vázquez [25%]; Francisco Botello Romero [25%]; Irene Xiang Domínguez Garoz [25%]; Marta Sampedro Bernal [25%] | 5.5h | 5.5h | 55 | 200 | 55 |
| 54 | 2.2.2 | Sprint Plannings |  | 0.1d? | 2022-10-31 A | 2022-10-31 A |  | 100% |  | 2022-10-31 | 2022-11-04 | 2d? | 2022-10-31 | 2022-10-31 |  |  | Carlos Manuel Vinagre Lorenzo [25%]; Enrique Prada Vázquez [25%]; Francisco Botello Romero [25%]; Irene Xiang Domínguez Garoz [25%]; Marta Sampedro Bernal [25%] | 1h | 1h | 10 | 200 | 10 |
| 55 | 2.2.3 | Fin de Paquete | milestone | 0d | 2022-11-02 | 2022-11-02 | 53, 54 |  |  | 2022-11-04 | 2022-11-04 | 0d | 2022-11-02 | 2022-11-02 | 19.38d |  |  |  |  |  |  |  |

| ID | WBS | Task | Type | Duration | Start | Finish | Predecessors | Complete | Remaining | Baseline start | Baseline finish | Baseline duration | Baseline 1 start | Baseline 1 finish | Total slack | Free slack | Constraint | Resources | Work | Actual work | Cost | Baseline cost | Actual cost |
| --- | --- | --- | --- | --- | --- | --- | --- | --- | --- | --- | --- | --- | --- | --- | --- | --- | --- | --- | --- | --- | --- | --- | --- |
| 56 | 2.3 | **Diseño** |  | 4.5d? | 2022-11-05 A | 2022-11-13 A | 55 | 100% |  | 2022-11-05 | 2022-11-12 | 3.75d? | 2022-11-05 | 2022-11-13 |  |  |  |  | 30.5h | 30.5h | 305 | 750 | 305 |
| 57 | 2.3.1 | Prototipo |  | 1.75d | 2022-11-05 A | 2022-11-08 A |  | 100% |  | 2022-11-05 | 2022-11-12 | 3.75d | 2022-11-05 | 2022-11-08 |  |  |  | Irene Xiang Domínguez Garoz [50%]; Marta Sampedro Bernal [50%]; Carlos Manuel Vinagre Lorenzo [50%] | 21h | 21h | 210 | 450 | 210 |
| 58 | 2.3.2 | Arquitectura |  | 2.5d? | 2022-11-05 A | 2022-11-13 A |  | 100% |  | 2022-11-05 | 2022-11-12 | 3.75d? | 2022-11-05 | 2022-11-13 |  |  |  | Enrique Prada Vázquez [50%]; Francisco Botello Romero [50%]; Carlos Manuel Vinagre Lorenzo | 9.5h | 9.5h | 95 | 300 | 95 |
| 59 | 2.3.3 | Fin de paquete | milestone | 0d | 2022-11-13 A | 2022-11-13 A | 57, 58 | 100% |  | 2022-11-12 | 2022-11-12 | 0d | 2022-11-13 | 2022-11-13 |  |  |  |  |  |  |  |  |  |
| 60 | 2.4 | **Iteración 1** |  | 3.75d? | 2022-11-14 A | 2022-11-20 | 59, 51 | 99% | 0d? | 2022-11-14 | 2022-11-20 | 3.75d? | 2022-11-14 | 2022-11-20 |  |  |  |  | 28.5h | 28.5h | 283.75 | 1,019.75 | 283.75 |
| 61 | 2.4.1 | Interfaz |  | 2d | 2022-11-14 A | 2022-11-18 A |  | 100% |  | 2022-11-14 | 2022-11-18 | 2.38d | 2022-11-14 | 2022-11-19 |  |  | finish no earlier than 2022-11-18 | Irene Xiang Domínguez Garoz; Marta Sampedro Bernal | 16.5h | 16.5h | 165 | 570 | 165 |
| 62 | 2.4.2 | Creación de Contenido |  | 0.62d | 2022-11-18 A | 2022-11-20 A | 61, 63 | 100% |  | 2022-11-18 | 2022-11-20 | 0.9d | 2022-11-18 | 2022-11-21 |  |  |  | Irene Xiang Domínguez Garoz; Enrique Prada Vázquez | 2.5h | 2.5h | 25 | 216 | 25 |
| 63 | 2.4.3 | Base de Datos |  | 0.5d | 2022-11-15 A | 2022-11-18 A |  | 100% |  | 2022-11-14 | 2022-11-16 | 1.38d | 2022-11-15 | 2022-11-18 |  |  | finish no earlier than 2022-11-16 | Enrique Prada Vázquez; Francisco Botello Romero | 8h | 8h | 80 | 220 | 80 |
| 64 | 2.4.4 | Sprint Retrospective Iteración 1 |  | 0.13d | 2022-11-20 A | 2022-11-20 A | 62 | 100% |  | 2022-11-20 | 2022-11-20 | 0.13d | 2022-11-20 | 2022-11-20 |  |  | start no earlier than 2022-11-19 |  | 0.5h | 0.5h |  |  |  |
| 65 | 2.4.5 | Control de los Costes Iteración 1 |  | 0.12d | 2022-11-20 A | 2022-11-20 A | 62 | 100% |  | 2022-11-20 | 2022-11-20 | 0.12d | 2022-11-20 | 2022-11-20 |  |  |  | Equipo Director | 1h | 1h | 13.75 | 13.75 | 13.75 |
| 66 | 2.4.6 | Entrega 1 | milestone | 0d | 2022-11-20 | 2022-11-20 | 64 |  |  | 2022-11-20 | 2022-11-20 | 0d | 2022-11-20 | 2022-11-20 | 0.59d | 0d |  |  |  |  |  |  |  |
| 67 | 2.5 | **Iteración 2** |  | 3.75d? | 2022-11-21 A | 2022-11-27 | 66 | 78% | 0.81d? | 2022-11-21 | 2022-11-27 | 3.75d? | 2022-11-21 | 2022-11-27 |  |  |  |  | 30h | 24.88h | 298.75 | 792.23 | 247.5 |
| 68 | 2.5.1 | Catálogo |  | 2.5d | 2022-11-22 A | 2022-11-26 |  | 75% | 0.62d | 2022-11-21 | 2022-11-25 | 2.34d | 2022-11-21 | 2022-11-25 | 7.38d |  | start no earlier than 2022-11-22 | Marta Sampedro Bernal [80%]; Irene Xiang Domínguez Garoz | 20h | 16h | 200 | 390 | 160 |
| 69 | 2.5.2 | Pasarela de Pago |  | 1.5d | 2022-11-23 A | 2022-11-26 |  | 75% | 0.38d | 2022-11-25 | 2022-11-27 | 0.91d | 2022-11-25 | 2022-11-27 | 7.38d |  | start no earlier than 2022-11-23 | Irene Xiang Domínguez Garoz [80%]; Enrique Prada Vázquez [80%] | 8.5h | 7.38h | 85 | 116.48 | 73.75 |
| 70 | 2.5.3 | Testing | milestone | 0d | 2022-11-21 | 2022-11-21 |  |  |  | 2022-11-21 | 2022-11-27 | 3.4d | 2022-11-21 | 2022-11-27 | 10.38d |  | start no earlier than 2022-11-21 | Carlos Manuel Vinagre Lorenzo [20%]; Enrique Prada Vázquez [20%]; Francisco Botello Romero [20%]; Irene Xiang Domínguez Garoz [20%]; Marta Sampedro Bernal [20%] |  |  |  | 272 |  |
| 71 | 2.5.4 | Sprint Retrospective Iteración 2 |  | 0.5d | 2022-11-26 A | 2022-11-27 A | 70 | 100% |  | 2022-11-27 | 2022-11-27 | 0.1d | 2022-11-27 | 2022-11-27 |  |  | start no earlier than 2022-11-26 |  | 0.5h | 0.5h |  |  |  |
| 72 | 2.5.5 | Control de los Costes Iteración 2 |  | 0.12d | 2022-11-27 A | 2022-11-27 A | 69 | 100% |  | 2022-11-27 | 2022-11-27 | 0.12d | 2022-11-27 | 2022-11-27 |  |  |  | Equipo Director | 1h | 1h | 13.75 | 13.75 | 13.75 |
| 73 | 2.5.6 | Entrega 2 | milestone | 0d | 2022-11-27 A | 2022-11-27 A | 70 | 100% |  | 2022-11-27 | 2022-11-27 | 0d | 2022-11-27 | 2022-11-27 |  |  |  |  |  |  |  |  |  |
| 74 | 2.6 | **Iteración 3** |  | 3.75d? | 2022-11-28 | 2022-12-04 | 73 |  |  | 2022-11-28 | 2022-12-04 | 3.75d? | 2022-11-28 | 2022-12-04 |  |  |  |  | 59.25h |  | 593.75 | 593.75 |  |
| 75 | 2.6.1 | Integración de IOS y Android |  | 1d | 2022-11-28 | 2022-11-29 |  |  |  | 2022-11-28 | 2022-11-29 | 1d | 2022-11-28 | 2022-11-29 | 2.38d | 1.5d |  | Marta Sampedro Bernal [80%]; Irene Xiang Domínguez Garoz [80%] | 12.8h |  | 128 | 128 |  |
| 76 | 2.6.2 | Subsistemas de Seguridad |  | 1.75d | 2022-11-28 | 2022-12-01 |  |  |  | 2022-11-28 | 2022-12-01 | 1.75d | 2022-11-28 | 2022-12-01 | 1.62d | 0.75d |  | Carlos Manuel Vinagre Lorenzo [80%]; Francisco Botello Romero [80%]; Enrique Prada Vázquez [20%] | 25.2h |  | 252 | 252 |  |
| 77 | 2.6.3 | Testing Final |  | 2.5d? | 2022-11-28 | 2022-12-02 |  |  |  | 2022-11-28 | 2022-12-02 | 2.5d? | 2022-11-28 | 2022-12-02 | 0.88d | 0d |  | Carlos Manuel Vinagre Lorenzo [20%]; Enrique Prada Vázquez [20%]; Francisco Botello Romero [20%]; Irene Xiang Domínguez Garoz [20%]; Marta Sampedro Bernal [20%] | 20h |  | 200 | 200 |  |
| 78 | 2.6.4 | Entrega Final |  | 0.5d | 2022-12-03 | 2022-12-03 | 77, 75, 76 |  |  | 2022-12-03 | 2022-12-03 | 0.5d | 2022-12-03 | 2022-12-03 | 0.88d | 0d |  |  |  |  |  |  |  |
| 79 | 2.6.5 | Sprint Retrospective Iteración 3 |  | 0.4d | 2022-12-04 | 2022-12-04 | 78 |  |  | 2022-12-04 | 2022-12-04 | 0.4d | 2022-12-04 | 2022-12-04 | 3.35d | 0d | start no earlier than 2022-12-03 |  | 0.25h |  |  |  |  |
| 80 | 2.6.6 | Control de los Costes Iteración 3 |  | 0.5d | 2022-12-04 | 2022-12-04 | 78 |  |  | 2022-12-04 | 2022-12-04 | 0.5d | 2022-12-04 | 2022-12-04 | 3.38d | 2.75d |  | Equipo Director [25%] | 1h |  | 13.75 | 13.75 |  |
| 81 | 2.7 | Fin de Ejecucion | milestone | 0d | 2022-12-03 | 2022-12-03 | 78 |  |  | 2022-12-03 | 2022-12-03 | 0d | 2022-12-03 | 2022-12-03 | 0.88d | 0.5d |  |  |  |  |  |  |  |

| ID | WBS | Task | Type | Duration | Start | Finish | Predecessors | Baseline start | Baseline finish | Baseline duration | Baseline 1 start | Baseline 1 finish | Total slack | Free slack | Constraint | Resources | Work | Cost | Baseline cost |
| --- | --- | --- | --- | --- | --- | --- | --- | --- | --- | --- | --- | --- | --- | --- | --- | --- | --- | --- | --- |
| 82 | 3 | **Seguimiento** |  | 13.75d? | 2022-11-14 | 2022-12-12 | 47 | 2022-11-14 | 2022-12-12 | 13.75d? | 2022-11-05 | 2022-12-01 |  |  |  |  | 67.8h | 932.25 | 488.12 |
| 83 | 3.1 | Informe de Seguimiento y Control |  | 7.75d? | 2022-11-14 | 2022-12-07 |  | 2022-11-14 | 2022-12-07 | 11.25d? | 2022-11-05 | 2022-11-27 | -8.75d | 0d |  | Equipo Director [5%] | 28.8h | 396 | 61.88 |
| 84 | 3.2 | Revisión Técnica Formal |  | 4d? | 2022-11-20 | 2022-12-04 |  | 2022-11-27 | 2022-12-04 | 4d? | 2022-11-27 | 2022-12-04 | 1.38d | 0d | start no earlier than 2022-11-20 | Equipo Director [25%] | 8h | 110 | 110 |
| 85 | 3.3 | Registro de Indicencias |  | 2d? | 2022-12-05 | 2022-12-10 | 84 | 2022-12-05 | 2022-12-10 | 2d? | 2022-12-05 | 2022-12-10 | 1.38d | 0.75d | start no earlier than 2022-12-05 | Equipo Director [25%] | 4h | 55 | 55 |
| 86 | 3.4 | Auditorías de Calidad |  | 3d? | 2022-11-20 | 2022-11-30 |  | 2022-11-19 | 2022-11-22 | 2d? | 2022-11-27 | 2022-11-30 | 5.38d |  | start no earlier than 2022-11-20 | Equipo Director [25%] | 8h | 110 | 55 |
| 87 | 3.5 | Registro de Decisiones |  | 4d? | 2022-11-27 | 2022-12-04 |  | 2022-11-27 | 2022-12-04 | 4d? | 2022-11-27 | 2022-12-04 | 3.38d | 2.75d | start no earlier than 2022-11-27 | Equipo Director [25%] | 8h | 110 | 110 |
| 88 | 3.6 | **Controles de calidad de los entregables** |  | 7.53d | 2022-11-20 | 2022-12-05 |  | 2022-11-23 | 2022-12-05 | 6.03d | 2022-11-23 | 2022-12-05 | 0d |  |  |  | 3.5h | 48.12 | 41.25 |
| 89 | 3.6.1 | Control de calidad del entregable 1 | manual | 0.5d | 2022-11-20 | 2022-11-20 | 66 | 2022-11-23 | 2022-11-23 | 0.13d | 2022-11-23 | 2022-11-23 |  |  | start no later than 2022-11-20 | Equipo Director | 1h | 13.75 | 13.75 |
| 90 | 3.6.2 | Control de calidad del entregable 2 |  | 0.63d | 2022-11-26 | 2022-11-27 | 73 | 2022-11-27 | 2022-11-28 | 0.13d | 2022-11-27 | 2022-11-28 | -0.5d | 0d | start no later than 2022-11-26 | Equipo Director [96.2%] | 1.5h | 20.62 | 13.75 |
| 91 | 3.6.3 | Control de calidad del entregable 3 |  | 0.13d | 2022-12-04 | 2022-12-05 | 79 | 2022-12-04 | 2022-12-05 | 0.13d | 2022-12-04 | 2022-12-05 | 3.35d |  |  | Equipo Director [96.2%] | 1h | 13.75 | 13.75 |
| 92 | 3.7 | Informes de Desempeño del Equipo de Trabajo |  | 5d? | 2022-11-19 | 2022-12-12 | 83 | 2022-12-07 | 2022-12-12 | 2d? | 2022-11-27 | 2022-12-01 | -8.75d | 0d | start no later than 2022-11-19 | Equipo Director [25%] | 7.5h | 103.12 | 55 |
| 93 | 3.8 | Fin de paquete | milestone | 0d | 2022-12-12 | 2022-12-12 | 92, 65, 72, 80, 85, 87 | 2022-12-12 | 2022-12-12 | 0d | 2022-12-10 | 2022-12-10 | 0.62d | 0.25d |  |  |  |  |  |
| 94 | 4 | **Cierre** |  | 3.25d | 2022-12-05 | 2022-12-12 | 81 | 2022-12-05 | 2022-12-12 | 3.25d | 2022-12-05 | 2022-12-12 |  |  |  |  | 8h | 110 | 110 |
| 95 | 4.1 | Lecciones Aprendidas |  | 2d | 2022-12-05 | 2022-12-10 |  | 2022-12-05 | 2022-12-10 | 2d | 2022-12-05 | 2022-12-10 | 0.38d | 0d | start no earlier than 2022-12-05 | Equipo Director [25%] | 4h | 55 | 55 |
| 96 | 4.2 | Presentación de Cierre |  | 1d | 2022-12-11 | 2022-12-12 | 95 | 2022-12-11 | 2022-12-12 | 1d | 2022-12-11 | 2022-12-12 | 0.38d | 0d | start no earlier than 2022-12-09 | Equipo Director [50%] | 4h | 55 | 55 |
| 97 | 4.3 | Fin de paquete | milestone | 0d | 2022-12-12 | 2022-12-12 | 95, 96, 93 | 2022-12-12 | 2022-12-12 | 0d | 2022-12-12 | 2022-12-12 | 0.38d |  |  |  |  |  |  |
